# russiancinema.ru_planning

How a schedule from MS Project changed from version to version. A marks actual dates.

## Version 1 (saved 2011-09-28)

| ID | WBS | Task | Duration | Start | Finish | Predecessors | Total float | Constraint |
| --- | --- | --- | --- | --- | --- | --- | --- | --- |
| 1 | 1 | **russiancinema.ru** | 69d? | 2011-10-03 08:00 | 2012-01-05 17:00 |  | 0d |  |
| 2 | 1.1 | **milestones** | 47.5d | 2011-10-04 17:00 | 2011-12-09 12:00 |  | 19.5d |  |
| 3 |  | готово новое окружение | 0d | 2011-10-04 17:00 | 2011-10-04 17:00 | 17 | 67d |  |
| 4 |  | готова таблица статуса контента | 0d | 2011-10-07 17:00 | 2011-10-07 17:00 | 20 | 64d |  |
| 5 |  | готовы Списки “Фильмы” и “ Персоналии” | 0d | 2011-10-18 17:00 | 2011-10-18 17:00 | 21 | 57d |  |
| 6 |  | готова Страница “Фильмы >> Персоны” | 0d | 2011-10-20 17:00 | 2011-10-20 17:00 | 25 | 55d |  |
| 7 |  | готовы Страница “Персоналии >> Фильмы” | 0d | 2011-10-27 12:00 | 2011-10-27 12:00 | 30 | 50.5d |  |
| 8 |  | Страницы “Фильмы >> Тексты” и “ Персоналии >> Тексты” | 0d | 2011-11-01 17:00 | 2011-11-01 17:00 | 34 | 47d |  |
| 9 |  | готов поиск | 0d | 2011-11-07 12:00 | 2011-11-07 12:00 | 43 | 43.5d |  |
| 10 |  | готовы изменения Look & Feel | 0d | 2011-11-23 12:00 | 2011-11-23 12:00 | 51 | 31.5d |  |
| 11 |  | готовы добавления новой функциональности сайта | 0d | 2011-12-09 12:00 | 2011-12-09 12:00 | 67 | 19.5d |  |
| 12 |  | все опции работают - начало этапа стабилизации | 0d | 2011-11-21 08:00 | 2011-11-21 08:00 |  | 0d | must start on 2011-11-21 08:00 |
| 13 |  | версия ресурса запущена в эксплуатацию с оговоренным набором опций | 0d | 2011-12-01 08:00 | 2011-12-01 08:00 |  | 0d | must start on 2011-12-01 08:00 |
| 14 | 1.2 | **работа с окружением** | 42d | 2011-10-03 08:00 | 2011-11-29 17:00 |  | 0d |  |
| 15 | 1.2.1 | **подготовка отдельного BETA-окружения для разработки** | 2d | 2011-10-03 08:00 | 2011-10-04 17:00 |  | 23d |  |
| 16 |  | копирование базы данных | 1d | 2011-10-03 08:00 | 2011-10-03 17:00 |  | 23d | start no earlier than 2011-10-03 08:00 |
| 17 |  | копирование движка и контента | 1d | 2011-10-04 08:00 | 2011-10-04 17:00 | 16 | 23d |  |
| 18 |  | паренос BETA версии на основной хостинг | 2d | 2011-11-28 08:00 | 2011-11-29 17:00 |  | 0d | must start on 2011-11-28 08:00 |
| 19 | 1.3 | **доработки в панели управления** | 20d | 2011-10-05 08:00 | 2011-11-01 17:00 | 15 | 19.5d |  |
| 20 |  | admin :: таблица статуса контента | 3d | 2011-10-05 08:00 | 2011-10-07 17:00 |  | 23d |  |
| 21 | 1.3.2 | **Списки “Фильмы” и “ Персоналии”** | 4d | 2011-10-13 08:00 | 2011-10-18 17:00 | 20 | 20d |  |
| 22 |  | Списки “Фильмы” и “ Персоналии” :: выбор записи | 2d | 2011-10-13 08:00 | 2011-10-14 17:00 |  | 20d |  |
| 23 |  | Списки “Фильмы” и “ Персоналии” :: удаление и пометка записи | 0d | 2011-10-14 17:00 | 2011-10-14 17:00 | 22 | 20d |  |
| 24 |  | Списки “Фильмы” и “ Персоналии” :: обновление списка, добавление записи | 2d | 2011-10-17 08:00 | 2011-10-18 17:00 | 23 | 20d |  |
| 25 | 1.3.3 | **Страница “Фильмы >> Персоны”** | 2d | 2011-10-19 08:00 | 2011-10-20 17:00 |  | 20d |  |
| 26 |  | Страница “Фильмы >> Персоны” :: набор записей | 0.5d | 2011-10-19 08:00 | 2011-10-19 12:00 | 24 | 20d |  |
| 27 |  | Страница “Фильмы >> Персоны” :: выбор персоны | 0.5d | 2011-10-19 13:00 | 2011-10-19 17:00 | 26 | 20d |  |
| 28 |  | Страница “Фильмы >> Персоны” :: drag’n’drop | 0.5d | 2011-10-20 08:00 | 2011-10-20 12:00 | 27 | 20d |  |
| 29 |  | Страница “Фильмы >> Персоны” :: изменение записей | 0.5d | 2011-10-20 13:00 | 2011-10-20 17:00 | 28 | 20d |  |
| 30 | 1.3.4 | **Страница “Персоналии >> Фильмы”** | 4.5d | 2011-10-21 08:00 | 2011-10-27 12:00 |  | 19.5d |  |
| 31 |  | Страница “Персоналии >> Фильмы” :: Название фильма | 0.5d | 2011-10-21 08:00 | 2011-10-21 12:00 | 29 | 20d |  |
| 32 |  | Страница “Персоналии >> Фильмы” :: drag’n’drop | 0.5d | 2011-10-21 13:00 | 2011-10-21 17:00 | 31 | 20d |  |
| 33 |  | Страница “Персоналии >> Фильмы” :: изменение записей | 0.5d | 2011-10-27 08:00 | 2011-10-27 12:00 | 32 | 19.5d |  |
| 34 | 1.3.5 | **Страницы “Фильмы >> Тексты” и “ Персоналии >> Тексты”** | 3.5d | 2011-10-27 13:00 | 2011-11-01 17:00 |  | 19.5d |  |
| 35 |  | Страницы “Фильмы >> Тексты” и “ Персоналии >> Тексты” :: поля записи | 0.5d | 2011-10-27 13:00 | 2011-10-27 17:00 | 33 | 19.5d |  |
| 36 |  | Страницы “Фильмы >> Тексты” и “ Персоналии >> Тексты” :: категории записи | 0.5d | 2011-10-28 08:00 | 2011-10-28 12:00 | 35 | 19.5d |  |
| 37 |  | Страницы “Фильмы >> Тексты” и “ Персоналии >> Тексты” :: преобразование текстов | 0.5d | 2011-10-28 13:00 | 2011-10-28 17:00 | 36 | 19.5d |  |
| 38 |  | Страницы “Фильмы >> Тексты” и “ Персоналии >> Тексты” :: визуальный редактор | 0.5d | 2011-10-31 08:00 | 2011-10-31 12:00 | 37 | 19.5d |  |
| 39 |  | Страницы “Фильмы >> Тексты” и “ Персоналии >> Тексты” :: drag’n’drop | 0.5d | 2011-10-31 13:00 | 2011-10-31 17:00 | 38 | 19.5d |  |
| 40 |  | Страницы “Фильмы >> Тексты” и “ Персоналии >> Тексты” :: свернутое/развернутое состояние записи | 0.5d | 2011-11-01 08:00 | 2011-11-01 12:00 | 39 | 19.5d |  |
| 41 |  | Страницы “Фильмы >> Тексты” и “ Персоналии >> Тексты” :: изменение записей | 0.5d | 2011-11-01 13:00 | 2011-11-01 17:00 | 40 | 19.5d |  |
| 42 | 1.4 | **доработки сайта** | 49.5d? | 2011-10-03 08:00 | 2011-12-09 12:00 |  | 19.5d |  |
| 43 | 1.4.1 | **доработки поиска** | 3.5d | 2011-11-01 17:00 | 2011-11-07 12:00 | 34 | 19.5d |  |
| 44 |  | поиск :: поле ввода поискового запроса :: расположение | 0d | 2011-11-01 17:00 | 2011-11-01 17:00 |  | 19.5d |  |
| 45 |  | поиск :: поле ввода поискового запроса :: выпадающий список | 0.5d | 2011-11-02 08:00 | 2011-11-02 12:00 | 44 | 19.5d |  |
| 46 |  | поиск :: результат поискового запроса :: источники данных | 0.5d | 2011-11-02 13:00 | 2011-11-02 17:00 | 45 | 19.5d |  |
| 47 |  | поиск :: результат поискового запроса :: поисковая фраза | 0.5d | 2011-11-03 08:00 | 2011-11-03 12:00 | 46 | 19.5d |  |
| 48 |  | поиск :: результат поискового запроса :: сортировка и вес | 0.5d | 2011-11-03 13:00 | 2011-11-03 17:00 | 47 | 19.5d |  |
| 49 |  | поиск :: результат поискового запроса :: сортировка блоков | 0.5d | 2011-11-04 08:00 | 2011-11-04 12:00 | 48 | 19.5d |  |
| 50 |  | поиск :: результат поискового запроса :: порционный вывод результатов | 1d | 2011-11-04 13:00 | 2011-11-07 12:00 | 49 | 19.5d |  |
| 51 | 1.4.2 | **изменение Look & Feel** | 37.5d | 2011-10-03 08:00 | 2011-11-23 12:00 |  | 19.5d |  |
| 52 |  | обсуждение дизайна | 8d | 2011-10-03 08:00 | 2011-10-12 17:00 |  | 33d | start no earlier than 2011-10-03 08:00 |
| 53 | 1.4.2.2 | **подготовка экранов** | 24d | 2011-10-13 08:00 | 2011-11-15 17:00 | 52 | 23d |  |
| 54 |  | Экран 1 | 4d | 2011-10-13 08:00 | 2011-10-18 17:00 |  | 33d |  |
| 55 |  | Экран 2 | 4d | 2011-10-19 08:00 | 2011-10-24 17:00 |  | 31d |  |
| 56 |  | Экран 3 | 4d | 2011-10-25 08:00 | 2011-10-28 17:00 |  | 29d |  |
| 57 |  | Экран 4 | 4d | 2011-10-31 08:00 | 2011-11-03 17:00 |  | 27d |  |
| 58 |  | Экран 5 | 4d | 2011-11-04 08:00 | 2011-11-09 17:00 |  | 25d |  |
| 59 |  | Экран 6 | 4d | 2011-11-10 08:00 | 2011-11-15 17:00 |  | 23d |  |
| 60 | 1.4.2.3 | **внедрение экранов в BETA версию** | 12d | 2011-11-07 13:00 | 2011-11-23 12:00 | 43 | 19.5d |  |
| 61 |  | Экран 1 | 2d | 2011-11-07 13:00 | 2011-11-09 12:00 | 54 | 19.5d |  |
| 62 |  | Экран 2 | 2d | 2011-11-09 13:00 | 2011-11-11 12:00 | 55, 61 | 19.5d |  |
| 63 |  | Экран 3 | 2d | 2011-11-11 13:00 | 2011-11-15 12:00 | 56, 62 | 19.5d |  |
| 64 |  | Экран 4 | 2d | 2011-11-15 13:00 | 2011-11-17 12:00 | 57, 63 | 19.5d |  |
| 65 |  | Экран 5 | 2d | 2011-11-17 13:00 | 2011-11-21 12:00 | 58, 64 | 19.5d |  |
| 66 |  | Экран 6 | 2d | 2011-11-21 13:00 | 2011-11-23 12:00 | 59, 65 | 19.5d |  |
| 67 | 1.4.3 | **добавление новой функциональности сайта** | 12d? | 2011-11-23 13:00 | 2011-12-09 12:00 | 60 | 19.5d |  |
| 68 |  | осмысленное содержание адресной строки | 1d | 2011-11-23 13:00 | 2011-11-24 12:00 |  | 19.5d |  |
| 69 |  | заголовок страницы не меняется при переходе от страницы к странице | 1d? | 2011-11-24 13:00 | 2011-11-25 12:00 | 68 | 19.5d |  |
| 70 |  | Персоналии/Фильмы - Фото галерея :: новый формат | 2d | 2011-11-25 13:00 | 2011-12-01 12:00 | 69 | 19.5d |  |

| ID | WBS | Task | Duration | Start | Finish | Predecessors | Total float | Constraint |
| --- | --- | --- | --- | --- | --- | --- | --- | --- |
| 71 |  | Тексты :: добавить структуру | 3d | 2011-12-01 13:00 | 2011-12-06 12:00 | 70 | 19.5d |  |
| 72 |  | Связь Фестивалей и Фильмов | 3d | 2011-12-06 13:00 | 2011-12-09 12:00 | 71 | 19.5d |  |
| 73 | 1.5 | **недоступность ресурсов** | 64d | 2011-10-10 08:00 | 2012-01-05 17:00 |  | 0d |  |
| 74 |  | Стас - Москва | 3d | 2011-10-10 08:00 | 2011-10-12 17:00 |  | 0d | must start on 2011-10-10 08:00 |
| 75 |  | Стас - Мадрид | 3d | 2011-10-24 08:00 | 2011-10-26 17:00 |  | 0d | must start on 2011-10-24 08:00 |
| 76 | 1.5.3 | **postponed** | 14d | 2011-12-19 08:00 | 2012-01-05 17:00 |  | 0d |  |
| 77 |  | новый релиз | 0d | 2011-12-19 08:00 | 2011-12-19 08:00 |  | 0d | must start on 2011-12-19 08:00 |
| 78 |  | Лица Отечественного Кино | 10d | 2011-12-19 08:00 | 2011-12-30 17:00 | 77 | 0d |  |
| 79 |  | логическая ошибка в меню | 4d | 2012-01-02 08:00 | 2012-01-05 17:00 | 78 | 0d |  |

## Version 2 (saved 2011-09-30)

Last finish 2012-01-05 → 2012-01-27 (+22d).

Added:

| ID | Task | Duration | Start | Finish |
| --- | --- | --- | --- | --- |
| 14 | **работы с релизом в декабре** | 41d | 2011-10-03 08:00 | 2011-11-28 17:00 |

Changed:

| ID | Task | Start | Finish | Duration | Total float | Predecessors | Other |
| --- | --- | --- | --- | --- | --- | --- | --- |
| 1 | **russiancinema.ru** |  | 2012-01-05 17:00 → 2012-01-27 17:00 (+22d) | 69d? → 85d |  |  |  |
| 2 | **milestones** | 2011-10-04 17:00 → 2011-10-03 17:00 (-1d) | 2011-12-09 12:00 → 2011-12-01 08:00 (-8d) | 47.5d → 42d | 19.5d → 34d |  |  |
| 3 | готово новое окружение | 2011-10-04 17:00 → 2011-10-03 17:00 (-1d) | 2011-10-04 17:00 → 2011-10-03 17:00 (-1d) |  | 67d → 84d |  |  |
| 4 | готова таблица статуса контента | 2011-10-07 17:00 → 2011-10-06 17:00 (-1d) | 2011-10-07 17:00 → 2011-10-06 17:00 (-1d) |  | 64d → 81d |  |  |
| 5 | готовы Списки “Фильмы” и “ Персоналии” | 2011-10-18 17:00 → 2011-10-17 17:00 (-1d) | 2011-10-18 17:00 → 2011-10-17 17:00 (-1d) |  | 57d → 74d |  |  |
| 6 | готова Страница “Фильмы >> Персоны” | 2011-10-20 17:00 → 2011-10-19 17:00 (-1d) | 2011-10-20 17:00 → 2011-10-19 17:00 (-1d) |  | 55d → 72d |  |  |
| 7 | готовы Страница “Персоналии >> Фильмы” | 2011-10-27 12:00 → 2011-10-21 12:00 (-6d) | 2011-10-27 12:00 → 2011-10-21 12:00 (-6d) |  | 50.5d → 70.5d |  |  |
| 8 | Страницы “Фильмы >> Тексты” и “ Персоналии >> Тексты” | 2011-11-01 17:00 → 2011-10-31 17:00 (-1d) | 2011-11-01 17:00 → 2011-10-31 17:00 (-1d) |  | 47d → 64d |  |  |
| 9 | готов поиск | 2011-11-07 12:00 → 2011-11-04 12:00 (-3d) | 2011-11-07 12:00 → 2011-11-04 12:00 (-3d) |  | 43.5d → 60.5d |  |  |
| 10 | готовы изменения Look & Feel | 2011-11-23 12:00 → 2011-11-16 17:00 (-7d) | 2011-11-23 12:00 → 2011-11-16 17:00 (-7d) |  | 31.5d → 52d |  |  |
| 11 | готовы добавления новой функциональности сайта | 2011-12-09 12:00 → 2011-11-23 17:00 (-16d) | 2011-12-09 12:00 → 2011-11-23 17:00 (-16d) |  | 19.5d → 47d |  |  |
| 15 | **работа с окружением** |  | 2011-11-29 17:00 → 2011-11-28 17:00 (-1d) | 42d → 41d |  |  |  |
| 16 | **подготовка отдельного BETA-окружения для разработки** |  | 2011-10-04 17:00 → 2011-10-03 17:00 (-1d) | 2d → 1d | 23d → 11.5d |  |  |
| 17 | копирование базы данных |  | 2011-10-03 17:00 → 2011-10-03 12:00 | 1d → 0.5d | 23d → 11.5d |  |  |
| 18 | копирование движка и контента | 2011-10-04 08:00 → 2011-10-03 13:00 (-1d) | 2011-10-04 17:00 → 2011-10-03 17:00 (-1d) | 1d → 0.5d | 23d → 11.5d |  |  |
| 19 | паренос BETA версии на основной хостинг |  | 2011-11-29 17:00 → 2011-11-28 17:00 (-1d) | 2d → 1d |  |  |  |
| 20 | **доработки в панели управления** | 2011-10-05 08:00 → 2011-10-04 08:00 (-1d) | 2011-11-01 17:00 → 2011-10-31 17:00 (-1d) |  | 19.5d → 8.5d |  |  |
| 21 | admin :: таблица статуса контента | 2011-10-05 08:00 → 2011-10-04 08:00 (-1d) | 2011-10-07 17:00 → 2011-10-06 17:00 (-1d) |  | 23d → 11.5d |  |  |
| 22 | **Списки “Фильмы” и “ Персоналии”** | 2011-10-13 08:00 → 2011-10-07 08:00 (-6d) | 2011-10-18 17:00 → 2011-10-17 17:00 (-1d) | 4d → 7d | 20d → 11.5d |  |  |
| 23 | Списки “Фильмы” и “ Персоналии” :: выбор записи | 2011-10-13 08:00 → 2011-10-07 08:00 (-6d) | 2011-10-14 17:00 → 2011-10-13 17:00 (-1d) |  | 20d → 11.5d |  |  |
| 24 | Списки “Фильмы” и “ Персоналии” :: удаление и пометка записи | 2011-10-14 17:00 → 2011-10-13 17:00 (-1d) | 2011-10-14 17:00 → 2011-10-13 17:00 (-1d) |  | 20d → 11.5d |  |  |
| 25 | Списки “Фильмы” и “ Персоналии” :: обновление списка, добавление записи | 2011-10-17 08:00 → 2011-10-14 08:00 (-3d) | 2011-10-18 17:00 → 2011-10-17 17:00 (-1d) |  | 20d → 11.5d |  |  |
| 26 | **Страница “Фильмы >> Персоны”** | 2011-10-19 08:00 → 2011-10-18 08:00 (-1d) | 2011-10-20 17:00 → 2011-10-19 17:00 (-1d) |  | 20d → 11.5d |  |  |
| 27 | Страница “Фильмы >> Персоны” :: набор записей | 2011-10-19 08:00 → 2011-10-18 08:00 (-1d) | 2011-10-19 12:00 → 2011-10-18 12:00 (-1d) |  | 20d → 11.5d |  |  |
| 28 | Страница “Фильмы >> Персоны” :: выбор персоны | 2011-10-19 13:00 → 2011-10-18 13:00 (-1d) | 2011-10-19 17:00 → 2011-10-18 17:00 (-1d) |  | 20d → 11.5d |  |  |
| 29 | Страница “Фильмы >> Персоны” :: drag’n’drop | 2011-10-20 08:00 → 2011-10-19 08:00 (-1d) | 2011-10-20 12:00 → 2011-10-19 12:00 (-1d) |  | 20d → 11.5d |  |  |
| 30 | Страница “Фильмы >> Персоны” :: изменение записей | 2011-10-20 13:00 → 2011-10-19 13:00 (-1d) | 2011-10-20 17:00 → 2011-10-19 17:00 (-1d) |  | 20d → 11.5d |  |  |
| 31 | **Страница “Персоналии >> Фильмы”** | 2011-10-21 08:00 → 2011-10-20 08:00 (-1d) | 2011-10-27 12:00 → 2011-10-21 12:00 (-6d) | 4.5d → 1.5d | 19.5d → 11.5d |  |  |
| 32 | Страница “Персоналии >> Фильмы” :: Название фильма | 2011-10-21 08:00 → 2011-10-20 08:00 (-1d) | 2011-10-21 12:00 → 2011-10-20 12:00 (-1d) |  | 20d → 11.5d |  |  |
| 33 | Страница “Персоналии >> Фильмы” :: drag’n’drop | 2011-10-21 13:00 → 2011-10-20 13:00 (-1d) | 2011-10-21 17:00 → 2011-10-20 17:00 (-1d) |  | 20d → 11.5d |  |  |
| 34 | Страница “Персоналии >> Фильмы” :: изменение записей | 2011-10-27 08:00 → 2011-10-21 08:00 (-6d) | 2011-10-27 12:00 → 2011-10-21 12:00 (-6d) |  | 19.5d → 11.5d |  |  |
| 35 | **Страницы “Фильмы >> Тексты” и “ Персоналии >> Тексты”** | 2011-10-27 13:00 → 2011-10-21 13:00 (-6d) | 2011-11-01 17:00 → 2011-10-31 17:00 (-1d) | 3.5d → 6.5d | 19.5d → 8.5d |  |  |
| 36 | Страницы “Фильмы >> Тексты” и “ Персоналии >> Тексты” :: поля записи | 2011-10-27 13:00 → 2011-10-21 13:00 (-6d) | 2011-10-27 17:00 → 2011-10-21 17:00 (-6d) |  | 19.5d → 11.5d |  |  |
| 37 | Страницы “Фильмы >> Тексты” и “ Персоналии >> Тексты” :: категории записи | 2011-10-28 08:00 → 2011-10-27 08:00 (-1d) | 2011-10-28 12:00 → 2011-10-27 12:00 (-1d) |  | 19.5d → 8.5d |  |  |
| 38 | Страницы “Фильмы >> Тексты” и “ Персоналии >> Тексты” :: преобразование текстов | 2011-10-28 13:00 → 2011-10-27 13:00 (-1d) | 2011-10-28 17:00 → 2011-10-27 17:00 (-1d) |  | 19.5d → 8.5d |  |  |
| 39 | Страницы “Фильмы >> Тексты” и “ Персоналии >> Тексты” :: визуальный редактор | 2011-10-31 08:00 → 2011-10-28 08:00 (-3d) | 2011-10-31 12:00 → 2011-10-28 12:00 (-3d) |  | 19.5d → 8.5d |  |  |
| 40 | Страницы “Фильмы >> Тексты” и “ Персоналии >> Тексты” :: drag’n’drop | 2011-10-31 13:00 → 2011-10-28 13:00 (-3d) | 2011-10-31 17:00 → 2011-10-28 17:00 (-3d) |  | 19.5d → 8.5d |  |  |
| 41 | Страницы “Фильмы >> Тексты” и “ Персоналии >> Тексты” :: свернутое/развернутое состояние записи | 2011-11-01 08:00 → 2011-10-31 08:00 (-1d) | 2011-11-01 12:00 → 2011-10-31 12:00 (-1d) |  | 19.5d → 8.5d |  |  |
| 42 | Страницы “Фильмы >> Тексты” и “ Персоналии >> Тексты” :: изменение записей | 2011-11-01 13:00 → 2011-10-31 13:00 (-1d) | 2011-11-01 17:00 → 2011-10-31 17:00 (-1d) |  | 19.5d → 8.5d |  |  |
| 43 | **доработки сайта** |  | 2011-12-09 12:00 → 2011-11-23 17:00 (-16d) | 49.5d? → 38d | 19.5d → 6d |  |  |
| 44 | **доработки поиска** | 2011-11-01 17:00 → 2011-10-31 17:00 (-1d) | 2011-11-07 12:00 → 2011-11-04 12:00 (-3d) |  | 19.5d → 8.5d |  |  |
| 45 | поиск :: поле ввода поискового запроса :: расположение | 2011-11-01 17:00 → 2011-10-31 17:00 (-1d) | 2011-11-01 17:00 → 2011-10-31 17:00 (-1d) |  | 19.5d → 8.5d |  |  |
| 46 | поиск :: поле ввода поискового запроса :: выпадающий список | 2011-11-02 08:00 → 2011-11-01 08:00 (-1d) | 2011-11-02 12:00 → 2011-11-01 12:00 (-1d) |  | 19.5d → 8.5d |  |  |
| 47 | поиск :: результат поискового запроса :: источники данных | 2011-11-02 13:00 → 2011-11-01 13:00 (-1d) | 2011-11-02 17:00 → 2011-11-01 17:00 (-1d) |  | 19.5d → 8.5d |  |  |
| 48 | поиск :: результат поискового запроса :: поисковая фраза | 2011-11-03 08:00 → 2011-11-02 08:00 (-1d) | 2011-11-03 12:00 → 2011-11-02 12:00 (-1d) |  | 19.5d → 8.5d |  |  |
| 49 | поиск :: результат поискового запроса :: сортировка и вес | 2011-11-03 13:00 → 2011-11-02 13:00 (-1d) | 2011-11-03 17:00 → 2011-11-02 17:00 (-1d) |  | 19.5d → 8.5d |  |  |
| 50 | поиск :: результат поискового запроса :: сортировка блоков | 2011-11-04 08:00 → 2011-11-03 08:00 (-1d) | 2011-11-04 12:00 → 2011-11-03 12:00 (-1d) |  | 19.5d → 8.5d |  |  |
| 51 | поиск :: результат поискового запроса :: порционный вывод результатов | 2011-11-04 13:00 → 2011-11-03 13:00 (-1d) | 2011-11-07 12:00 → 2011-11-04 12:00 (-3d) |  | 19.5d → 8.5d |  |  |
| 52 | **изменение Look & Feel** |  | 2011-11-23 12:00 → 2011-11-16 17:00 (-7d) | 37.5d → 33d | 19.5d → 6d |  |  |
| 61 | **внедрение экранов в BETA версию** | 2011-11-07 13:00 → 2011-11-04 13:00 (-3d) | 2011-11-23 12:00 → 2011-11-16 17:00 (-7d) | 12d → 8.5d | 19.5d → 6d |  |  |
| 62 | Экран 1 | 2011-11-07 13:00 → 2011-11-04 13:00 (-3d) | 2011-11-09 12:00 → 2011-11-07 12:00 (-2d) | 2d → 1d | 19.5d → 8.5d |  |  |
| 63 | Экран 2 | 2011-11-09 13:00 → 2011-11-07 13:00 (-2d) | 2011-11-11 12:00 → 2011-11-08 12:00 (-3d) | 2d → 1d | 19.5d → 8.5d |  |  |
| 64 | Экран 3 | 2011-11-11 13:00 → 2011-11-08 13:00 (-3d) | 2011-11-15 12:00 → 2011-11-09 12:00 (-6d) | 2d → 1d | 19.5d → 8.5d |  |  |
| 65 | Экран 4 | 2011-11-15 13:00 → 2011-11-09 13:00 (-6d) | 2011-11-17 12:00 → 2011-11-10 12:00 (-7d) | 2d → 1d | 19.5d → 8.5d |  |  |
| 66 | Экран 5 | 2011-11-17 13:00 → 2011-11-10 13:00 (-7d) | 2011-11-21 12:00 → 2011-11-11 12:00 (-10d) | 2d → 1d | 19.5d → 8.5d |  |  |
| 67 | Экран 6 | 2011-11-21 13:00 → 2011-11-16 08:00 (-5d) | 2011-11-23 12:00 → 2011-11-16 17:00 (-7d) | 2d → 1d | 19.5d → 6d |  |  |
| 68 | **добавление новой функциональности сайта** | 2011-11-23 13:00 → 2011-11-17 08:00 (-6d) | 2011-12-09 12:00 → 2011-11-23 17:00 (-16d) | 12d? → 5d | 19.5d → 6d |  |  |
| 69 | Тексты :: добавить структуру | 2011-12-01 13:00 → 2011-11-17 08:00 (-14d) | 2011-12-06 12:00 → 2011-11-21 17:00 (-15d) |  | 19.5d → 6d | 74 → none |  |
| 70 | осмысленное содержание адресной строки | 2011-11-23 13:00 → 2011-11-22 08:00 (-1d) | 2011-11-24 12:00 → 2011-11-22 17:00 (-2d) |  | 19.5d → 6d | none → 69 |  |
| 71 | заголовок страницы не меняется при переходе от страницы к странице | 2011-11-24 13:00 → 2011-11-23 08:00 (-1d) | 2011-11-25 12:00 → 2011-11-23 17:00 (-2d) | 1d? → 1d | 19.5d → 6d |  |  |
| 72 | **postponed / out of scope** | 2011-12-19 08:00 → 2012-01-02 08:00 (+14d) | 2012-01-05 17:00 → 2012-01-27 17:00 (+22d) | 14d → 20d |  |  | was named postponed |
| 73 | новый релиз | 2011-12-19 08:00 → 2012-01-02 08:00 (+14d) | 2011-12-19 08:00 → 2012-01-02 08:00 (+14d) |  |  |  | constraint must start on 2011-12-19 08:00 → must start on 2012-01-02 08:00 |
| 74 | Персоналии/Фильмы - Фото галерея :: новый формат | 2011-11-25 13:00 → 2012-01-02 08:00 (+38d) | 2011-12-01 12:00 → 2012-01-04 17:00 (+34d) | 2d → 3d | 19.5d → 0d | 71 → 73 |  |
| 75 | Связь Фестивалей и Фильмов | 2011-12-06 13:00 → 2012-01-05 08:00 (+30d) | 2011-12-09 12:00 → 2012-01-09 17:00 (+31d) |  | 19.5d → 0d | 69 → 74 |  |
| 76 | Лица Отечественного Кино | 2011-12-19 08:00 → 2012-01-10 08:00 (+22d) | 2011-12-30 17:00 → 2012-01-23 17:00 (+24d) |  |  | 73 → 75, 73 |  |
| 77 | логическая ошибка в меню | 2012-01-02 08:00 → 2012-01-24 08:00 (+22d) | 2012-01-05 17:00 → 2012-01-27 17:00 (+22d) |  |  |  |  |
| 78 | **недоступность ресурсов** |  | 2012-01-05 17:00 → 2011-10-26 17:00 (-71d) | 64d → 13d |  |  |  |
| 79 | Стас - Москва |  |  |  |  |  | resources Стас → none |
| 80 | Стас - Мадрид |  |  |  |  |  | resources Стас → none |

## Version 3 (saved 2011-10-16)

Last finish stays 2012-01-27. Complete tasks 0 → 4.

Added:

| ID | Task | Duration | Start | Finish | Constraint |
| --- | --- | --- | --- | --- | --- |
| 3 | старт проекта | 0d | 2011-10-04 08:00 A | 2011-10-04 08:00 A | must start on 2011-10-04 08:00 |

Removed: 79 Стас - Москва

Changed:

| ID | Task | Start | Finish | Duration | Complete | Total float | Predecessors | Other |
| --- | --- | --- | --- | --- | --- | --- | --- | --- |
| 1 | **russiancinema.ru** | 2011-10-03 08:00 A |  |  | 0% → 3% |  |  |  |
| 2 | **milestones** | 2011-10-03 17:00 → 2011-10-04 08:00 A (+1d) |  |  |  | 34d → 42d |  |  |
| 4 | готово новое окружение | 2011-10-03 17:00 → 2011-10-04 17:00 A (+1d) | 2011-10-03 17:00 → 2011-10-04 17:00 A (+1d) |  | 0% → 100% | 84d → none |  |  |
| 5 | готова таблица статуса контента | 2011-10-06 17:00 → 2011-10-17 17:00 (+11d) | 2011-10-06 17:00 → 2011-10-17 17:00 (+11d) |  |  | 81d → 74d |  |  |
| 6 | готовы Списки “Фильмы” и “ Персоналии” | 2011-10-17 17:00 → 2011-10-21 17:00 (+4d) | 2011-10-17 17:00 → 2011-10-21 17:00 (+4d) |  |  | 74d → 70d |  |  |
| 7 | готова Страница “Фильмы >> Персоны” | 2011-10-19 17:00 → 2011-10-28 17:00 (+9d) | 2011-10-19 17:00 → 2011-10-28 17:00 (+9d) |  |  | 72d → 65d |  |  |
| 8 | готовы Страница “Персоналии >> Фильмы” | 2011-10-21 12:00 → 2011-11-01 12:00 (+11d) | 2011-10-21 12:00 → 2011-11-01 12:00 (+11d) |  |  | 70.5d → 63.5d |  |  |
| 9 | Страницы “Фильмы >> Тексты” и “ Персоналии >> Тексты” | 2011-10-31 17:00 → 2011-11-04 17:00 (+4d) | 2011-10-31 17:00 → 2011-11-04 17:00 (+4d) |  |  | 64d → 60d |  |  |
| 10 | готов поиск | 2011-11-04 12:00 → 2011-11-22 12:00 (+18d) | 2011-11-04 12:00 → 2011-11-22 12:00 (+18d) |  |  | 60.5d → 48.5d |  |  |
| 15 | **работы с релизом в декабре** | 2011-10-03 08:00 A |  |  | 0% → 4% |  |  |  |
| 16 | **работа с окружением** | 2011-10-03 08:00 → 2011-10-04 08:00 A (+1d) |  | 41d → 40d | 0% → 50% |  |  |  |
| 17 | **подготовка отдельного BETA-окружения для разработки** | 2011-10-03 08:00 → 2011-10-04 08:00 A (+1d) | 2011-10-03 17:00 → 2011-10-04 17:00 A (+1d) |  | 0% → 100% | 11.5d → none |  |  |
| 18 | копирование базы данных | 2011-10-03 08:00 → 2011-10-04 08:00 A (+1d) | 2011-10-03 12:00 → 2011-10-04 12:00 A (+1d) |  | 0% → 100% | 11.5d → none | none → 3 |  |
| 19 | копирование движка и контента | 2011-10-03 13:00 → 2011-10-04 13:00 A (+1d) | 2011-10-03 17:00 → 2011-10-04 17:00 A (+1d) |  | 0% → 100% | 11.5d → none |  |  |
| 21 | **доработки в панели управления** | 2011-10-04 08:00 → 2011-10-10 08:00 A (+6d) | 2011-10-31 17:00 → 2011-11-04 17:00 (+4d) |  | 0% → 11% | 8.5d → 19d |  |  |
| 22 | admin :: таблица статуса контента | 2011-10-04 08:00 → 2011-10-10 08:00 A (+6d) | 2011-10-06 17:00 → 2011-10-17 17:00 (+11d) |  | 0% → 50% | 11.5d → 0d |  | constraint none → must start on 2011-10-10 08:00 |
| 23 | **Списки “Фильмы” и “ Персоналии”** | 2011-10-07 08:00 → 2011-10-18 08:00 (+11d) | 2011-10-17 17:00 → 2011-10-21 17:00 (+4d) | 7d → 4d |  | 11.5d → 22d |  |  |
| 24 | Списки “Фильмы” и “ Персоналии” :: выбор записи | 2011-10-07 08:00 → 2011-10-18 08:00 (+11d) | 2011-10-13 17:00 → 2011-10-19 17:00 (+6d) |  |  | 11.5d → 22d | none → 22 |  |
| 25 | Списки “Фильмы” и “ Персоналии” :: удаление и пометка записи | 2011-10-13 17:00 → 2011-10-19 17:00 (+6d) | 2011-10-13 17:00 → 2011-10-19 17:00 (+6d) |  |  | 11.5d → 22d |  |  |
| 26 | Списки “Фильмы” и “ Персоналии” :: обновление списка, добавление записи | 2011-10-14 08:00 → 2011-10-20 08:00 (+6d) | 2011-10-17 17:00 → 2011-10-21 17:00 (+4d) |  |  | 11.5d → 22d |  |  |
| 27 | **Страница “Фильмы >> Персоны”** | 2011-10-18 08:00 → 2011-10-27 08:00 (+9d) | 2011-10-19 17:00 → 2011-10-28 17:00 (+9d) |  |  | 11.5d → 19d |  |  |
| 28 | Страница “Фильмы >> Персоны” :: набор записей | 2011-10-18 08:00 → 2011-10-27 08:00 (+9d) | 2011-10-18 12:00 → 2011-10-27 12:00 (+9d) |  |  | 11.5d → 19d |  |  |
| 29 | Страница “Фильмы >> Персоны” :: выбор персоны | 2011-10-18 13:00 → 2011-10-27 13:00 (+9d) | 2011-10-18 17:00 → 2011-10-27 17:00 (+9d) |  |  | 11.5d → 19d |  |  |
| 30 | Страница “Фильмы >> Персоны” :: drag’n’drop | 2011-10-19 08:00 → 2011-10-28 08:00 (+9d) | 2011-10-19 12:00 → 2011-10-28 12:00 (+9d) |  |  | 11.5d → 19d |  |  |
| 31 | Страница “Фильмы >> Персоны” :: изменение записей | 2011-10-19 13:00 → 2011-10-28 13:00 (+9d) | 2011-10-19 17:00 → 2011-10-28 17:00 (+9d) |  |  | 11.5d → 19d |  |  |
| 32 | **Страница “Персоналии >> Фильмы”** | 2011-10-20 08:00 → 2011-10-31 08:00 (+11d) | 2011-10-21 12:00 → 2011-11-01 12:00 (+11d) |  |  | 11.5d → 19d |  |  |
| 33 | Страница “Персоналии >> Фильмы” :: Название фильма | 2011-10-20 08:00 → 2011-10-31 08:00 (+11d) | 2011-10-20 12:00 → 2011-10-31 12:00 (+11d) |  |  | 11.5d → 19d |  |  |
| 34 | Страница “Персоналии >> Фильмы” :: drag’n’drop | 2011-10-20 13:00 → 2011-10-31 13:00 (+11d) | 2011-10-20 17:00 → 2011-10-31 17:00 (+11d) |  |  | 11.5d → 19d |  |  |
| 35 | Страница “Персоналии >> Фильмы” :: изменение записей | 2011-10-21 08:00 → 2011-11-01 08:00 (+11d) | 2011-10-21 12:00 → 2011-11-01 12:00 (+11d) |  |  | 11.5d → 19d |  |  |
| 36 | **Страницы “Фильмы >> Тексты” и “ Персоналии >> Тексты”** | 2011-10-21 13:00 → 2011-11-01 13:00 (+11d) | 2011-10-31 17:00 → 2011-11-04 17:00 (+4d) | 6.5d → 3.5d |  | 8.5d → 19d |  |  |
| 37 | Страницы “Фильмы >> Тексты” и “ Персоналии >> Тексты” :: поля записи | 2011-10-21 13:00 → 2011-11-01 13:00 (+11d) | 2011-10-21 17:00 → 2011-11-01 17:00 (+11d) |  |  | 11.5d → 19d |  |  |
| 38 | Страницы “Фильмы >> Тексты” и “ Персоналии >> Тексты” :: категории записи | 2011-10-27 08:00 → 2011-11-02 08:00 (+6d) | 2011-10-27 12:00 → 2011-11-02 12:00 (+6d) |  |  | 8.5d → 19d |  |  |
| 39 | Страницы “Фильмы >> Тексты” и “ Персоналии >> Тексты” :: преобразование текстов | 2011-10-27 13:00 → 2011-11-02 13:00 (+6d) | 2011-10-27 17:00 → 2011-11-02 17:00 (+6d) |  |  | 8.5d → 19d |  |  |
| 40 | Страницы “Фильмы >> Тексты” и “ Персоналии >> Тексты” :: визуальный редактор | 2011-10-28 08:00 → 2011-11-03 08:00 (+6d) | 2011-10-28 12:00 → 2011-11-03 12:00 (+6d) |  |  | 8.5d → 19d |  |  |
| 41 | Страницы “Фильмы >> Тексты” и “ Персоналии >> Тексты” :: drag’n’drop | 2011-10-28 13:00 → 2011-11-03 13:00 (+6d) | 2011-10-28 17:00 → 2011-11-03 17:00 (+6d) |  |  | 8.5d → 19d |  |  |
| 42 | Страницы “Фильмы >> Тексты” и “ Персоналии >> Тексты” :: свернутое/развернутое состояние записи | 2011-10-31 08:00 → 2011-11-04 08:00 (+4d) | 2011-10-31 12:00 → 2011-11-04 12:00 (+4d) |  |  | 8.5d → 19d |  |  |
| 43 | Страницы “Фильмы >> Тексты” и “ Персоналии >> Тексты” :: изменение записей | 2011-10-31 13:00 → 2011-11-04 13:00 (+4d) | 2011-10-31 17:00 → 2011-11-04 17:00 (+4d) |  |  | 8.5d → 19d |  |  |
| 45 | **доработки поиска** | 2011-10-31 17:00 → 2011-11-16 17:00 (+16d) | 2011-11-04 12:00 → 2011-11-22 12:00 (+18d) |  |  | 8.5d → 7.5d | 36 → 62 |  |
| 46 | поиск :: поле ввода поискового запроса :: расположение | 2011-10-31 17:00 → 2011-11-16 17:00 (+16d) | 2011-10-31 17:00 → 2011-11-16 17:00 (+16d) |  |  | 8.5d → 7.5d |  |  |
| 47 | поиск :: поле ввода поискового запроса :: выпадающий список | 2011-11-01 08:00 → 2011-11-17 08:00 (+16d) | 2011-11-01 12:00 → 2011-11-17 12:00 (+16d) |  |  | 8.5d → 7.5d |  |  |
| 48 | поиск :: результат поискового запроса :: источники данных | 2011-11-01 13:00 → 2011-11-17 13:00 (+16d) | 2011-11-01 17:00 → 2011-11-17 17:00 (+16d) |  |  | 8.5d → 7.5d |  |  |
| 49 | поиск :: результат поискового запроса :: поисковая фраза | 2011-11-02 08:00 → 2011-11-18 08:00 (+16d) | 2011-11-02 12:00 → 2011-11-18 12:00 (+16d) |  |  | 8.5d → 7.5d |  |  |
| 50 | поиск :: результат поискового запроса :: сортировка и вес | 2011-11-02 13:00 → 2011-11-18 13:00 (+16d) | 2011-11-02 17:00 → 2011-11-18 17:00 (+16d) |  |  | 8.5d → 7.5d |  |  |
| 51 | поиск :: результат поискового запроса :: сортировка блоков | 2011-11-03 08:00 → 2011-11-21 08:00 (+18d) | 2011-11-03 12:00 → 2011-11-21 12:00 (+18d) |  |  | 8.5d → 7.5d |  |  |
| 52 | поиск :: результат поискового запроса :: порционный вывод результатов | 2011-11-03 13:00 → 2011-11-21 13:00 (+18d) | 2011-11-04 12:00 → 2011-11-22 12:00 (+18d) |  |  | 8.5d → 7.5d |  |  |
| 62 | **внедрение экранов в BETA версию** | 2011-11-04 13:00 → 2011-10-19 08:00 (-16d) |  | 8.5d → 21d |  |  | 45 → none |  |
| 63 | Экран 1 | 2011-11-04 13:00 → 2011-10-19 08:00 (-16d) | 2011-11-07 12:00 → 2011-10-19 17:00 (-19d) |  |  | 8.5d → 21d |  |  |
| 64 | Экран 2 | 2011-11-07 13:00 → 2011-10-27 08:00 (-11d) | 2011-11-08 12:00 → 2011-10-27 17:00 (-12d) |  |  | 8.5d → 16d |  |  |
| 65 | Экран 3 | 2011-11-08 13:00 → 2011-10-31 08:00 (-8d) | 2011-11-09 12:00 → 2011-10-31 17:00 (-9d) |  |  | 8.5d → 15d |  |  |
| 66 | Экран 4 | 2011-11-09 13:00 → 2011-11-04 08:00 (-5d) | 2011-11-10 12:00 → 2011-11-04 17:00 (-6d) |  |  | 8.5d → 12d |  |  |
| 67 | Экран 5 | 2011-11-10 13:00 → 2011-11-10 08:00 | 2011-11-11 12:00 → 2011-11-10 17:00 (-1d) |  |  | 8.5d → 9d |  |  |
| 79 | **недоступность ресурсов** | 2011-10-10 08:00 → 2011-10-31 08:00 (+21d) | 2011-10-26 17:00 → 2011-11-02 17:00 (+7d) | 13d → 3d |  |  |  |  |
| 80 | Стас - Мадрид | 2011-10-24 08:00 → 2011-10-31 08:00 (+7d) | 2011-10-26 17:00 → 2011-11-02 17:00 (+7d) |  |  |  |  | constraint must start on 2011-10-24 08:00 → must start on 2011-10-31 08:00 |
